Schedule from a web Gantt chart, 2026-08-24 to 2026-08-24.
Saturdays and Sundays are off

## Schedule

| ID | WBS | Task | Duration | Start | Finish |
| --- | --- | --- | --- | --- | --- |
| 2 | 1 | **SDV rework** | 1d | 2026-08-24 | 2026-08-24 |
| 3 | 1.1 | Plan A: 增加锡重新回流 | 1d | 2026-08-24 | 2026-08-24 |
| 5 | 2 | **SDV-SIT DC module焊接验证** | 1d | 2026-08-24 | 2026-08-24 |
| 6 | 2.1 | 波峰焊验证 | 1d | 2026-08-24 | 2026-08-24 |
| 7 | 2.2 | 回流焊验证 | 1d | 2026-08-24 | 2026-08-24 |
